Schedule from MS Project, 2025-03-12 to 2025-07-23, costs in $.

## Calendars

- Standard: Mon-Fri 08:00-12:00, 13:00-17:00; Sat-Sun off.

## Resources

| Resource | Rate |
| --- | --- |
| Laptops | 1300 |
| VR Hardware | 650 |
| Cloud Subscription | 432 |
| Unreal Engine License |  |
| HR Manager | 58 |
| Engineering Manager | 53 |
| Senior Platforms Engineer | 56 |
| Risk Management Specialist | 28 |
| Cultural Consultant | 42 |
| Senior Product Owner | 52 |
| Senior VR Software Engineer 1 | 50 |
| Associate full stack software Engineer 2 | 32 |
| Fullstack software engineer Intern 5 | 25 |
| Senior QA Engineer | 37 |
| Senior VR Designer/Content Developer | 37 |
| Trainer | 38 |
| Senior VR Software Engineer 2 | 50 |
| Intermediate Full stack software engineer 2 | 42 |
| Intermediate Full stack software engineer 1 | 42 |
| Associate full stack software Engineer 1 | 32 |
| Fullstack software engineer Intern 4 | 25 |
| Fullstack software engineer Intern 3 | 25 |
| Fullstack software engineer Intern 2 | 25 |
| Fullstack software engineer Intern 1 | 25 |
| Electricity |  |
| Rent |  |
| Jira | 172 |
| Mouse | 20 |
| Keyboard | 45 |
| Github | 4 |

## Schedule

| ID | WBS | Task | Type | Duration | Start | Finish | Predecessors | Total slack | Resources | Work | Cost |
| --- | --- | --- | --- | --- | --- | --- | --- | --- | --- | --- | --- |
| 1 | 1 | **OPAIC MedVR** |  | 96d | 2025-03-12 | 2025-07-23 |  | 0d |  | 2896h | 113,808 |
| 2 | 1.1 | **Sprint 0** |  | 10d | 2025-03-12 | 2025-03-25 |  | 0d |  | 272h | 14,448 |
| 3 | 1.1.1 | Project Start | milestone | 0d | 2025-03-12 | 2025-03-12 |  | 0d | Engineering Manager |  |  |
| 4 | 1.1.2 | Define project Scope, goals, and success criteria |  | 3d | 2025-03-12 | 2025-03-14 | 3 | 0d | Engineering Manager | 24h | 1,272 |
| 5 | 1.1.3 | Completion of Project Vision | milestone | 0d | 2025-03-14 | 2025-03-14 | 4 | 93d | Engineering Manager |  |  |
| 6 | 1.1.4 | Feasibility Study |  | 3d | 2025-03-17 | 2025-03-19 | 4 | 90d | Senior Product Owner | 24h | 1,248 |
| 7 | 1.1.5 | Hiring employees |  | 5d | 2025-03-17 | 2025-03-21 | 4 | 1d | HR Manager | 40h | 2,320 |
| 8 | 1.1.6 | Define Version Control System |  | 1d | 2025-03-17 | 2025-03-17 | 4 | 0d | Senior Platforms Engineer | 8h | 448 |
| 9 | 1.1.7 | Define Cloud Storage |  | 5d | 2025-03-18 | 2025-03-24 | 4, 8 | 0d | Senior Platforms Engineer | 40h | 2,240 |
| 10 | 1.1.8 | Setup development and testing environments for VR |  | 5d | 2025-03-17 | 2025-03-21 | 4 | 1d | Senior Platforms Engineer | 40h | 2,240 |
| 11 | 1.1.9 | Identify VR hardware and software (headsets, controllers) |  | 5d | 2025-03-17 | 2025-03-21 | 4 | 1d | Senior VR Software Engineer 1 | 40h | 2,000 |
| 12 | 1.1.10 | Identify Project Management tools (Jira) |  | 3d | 2025-03-17 | 2025-03-19 | 4 | 3d | Senior Product Owner | 24h | 1,248 |
| 13 | 1.1.11 | Conduct research on culturally responsive healthcare training |  | 3d | 2025-03-17 | 2025-03-19 | 4 | 3d | Cultural Consultant | 24h | 1,008 |
| 14 | 1.1.12 | Sprint Review and Retrospective |  | 1d | 2025-03-25 | 2025-03-25 | 4, 7, 8, 9, 10, 11, 12, 13 | 0d | Engineering Manager | 8h | 424 |
| 15 | 1.1.13 | Preparation for Sprint 1 done | milestone | 0d | 2025-03-25 | 2025-03-25 | 14 | 86d | Engineering Manager |  |  |
| 16 | 1.2 | **Sprint 1** |  | 7d | 2025-03-26 | 2025-04-03 |  | 0d |  | 176h | 7,792 |
| 17 | 1.2.1 | Design wireframes and UI/UX flow for the platform |  | 3d | 2025-03-26 | 2025-03-28 | 4, 14 | 0d | Senior VR Designer/Content Developer | 24h | 888 |
| 18 | 1.2.2 | Emergency Room - Design immersive 3d room |  | 3d | 2025-03-26 | 2025-03-28 | 4, 14 | 0d | Senior VR Software Engineer 1 | 24h | 1,200 |
| 19 | 1.2.3 | Emergency Room - Design VR doctor and patient models |  | 3d | 2025-03-26 | 2025-03-28 | 4, 14 | 0d | Senior VR Software Engineer 2 | 24h | 1,200 |
| 20 | 1.2.4 | Emergency Room - Design interactive medical tools |  | 3d | 2025-03-26 | 2025-03-28 | 4, 14 | 0d | Intermediate Full stack software engineer 1 | 24h | 1,008 |
| 21 | 1.2.5 | Emergency Room - Design Role-playing mechanics (medical scenarios) |  | 3d | 2025-03-26 | 2025-03-28 | 4, 14 | 0d | Intermediate Full stack software engineer 2 | 24h | 1,008 |
| 22 | 1.2.6 | Design culturally inclusive assets |  | 3d | 2025-03-26 | 2025-03-28 | 4, 14 | 0d | Cultural Consultant | 24h | 1,008 |
| 23 | 1.2.7 | Gather Feedback from lecturer and students. |  | 2d | 2025-03-31 | 2025-04-01 | 17, 18, 19, 20, 21, 22 | 0d | Senior Product Owner | 16h | 832 |
| 24 | 1.2.8 | Design risk Management strategy (tech malfunctions, user adoption challenges) |  | 1d | 2025-04-02 | 2025-04-02 | 23 | 0d | Risk Management Specialist | 8h | 224 |
| 25 | 1.2.9 | Sprint Review and Retrospective |  | 1d | 2025-04-03 | 2025-04-03 | 17, 18, 19, 20, 21, 22, 23, 24 | 0d | Engineering Manager | 8h | 424 |

| ID | WBS | Task | Type | Duration | Start | Finish | Predecessors | Total slack | Free slack | Resources | Work | Cost |
| --- | --- | --- | --- | --- | --- | --- | --- | --- | --- | --- | --- | --- |
| 26 | 1.3 | **Sprint 2** |  | 13d | 2025-04-04 | 2025-04-22 |  | 0d |  |  | 264h | 11,656 |
| 27 | 1.3.1 | Develop UI/UX flows |  | 3d | 2025-04-04 | 2025-04-08 | 17, 22, 23, 24, 25 | 2d | 0d | Senior VR Software Engineer 1 | 24h | 1,200 |
| 28 | 1.3.2 | Testing UI/UX flows |  | 2d | 2025-04-09 | 2025-04-10 | 27 | 2d |  | Senior QA Engineer | 16h | 592 |
| 29 | 1.3.3 | Emergency Room - Develop immersive Room |  | 3d | 2025-04-04 | 2025-04-08 | 18, 25 | 0d |  | Senior VR Software Engineer 2 | 24h | 1,200 |
| 30 | 1.3.4 | Emergency Room - Develop VR doctor and patient models |  | 3d | 2025-04-04 | 2025-04-08 | 19, 25 | 0d |  | Intermediate Full stack software engineer 1 | 24h | 1,008 |
| 31 | 1.3.5 | Emergency Room - Develop interactive medical tools |  | 3d | 2025-04-04 | 2025-04-08 | 20, 25 | 0d |  | Intermediate Full stack software engineer 2 | 24h | 1,008 |
| 32 | 1.3.6 | Emergency Room - Develop role-playing mechanics |  | 3d | 2025-04-04 | 2025-04-08 | 21, 25 | 0d |  | Associate full stack software Engineer 1 | 24h | 768 |
| 33 | 1.3.7 | Testing of Emergency Room |  | 2d | 2025-04-09 | 2025-04-10 | 29, 30, 31, 32 | 0d |  | Senior QA Engineer | 16h | 592 |
| 34 | 1.3.8 | Gather feedback from lecturer and students |  | 2d | 2025-04-11 | 2025-04-14 | 33 | 0d |  | Senior Product Owner | 16h | 832 |
| 35 | 1.3.9 | Completion of UI/UX flows | milestone | 0d | 2025-04-14 | 2025-04-14 | 28, 34 | 0d |  | Senior QA Engineer |  |  |
| 36 | 1.3.10 | Completion of Emergency Room | milestone | 0d | 2025-04-14 | 2025-04-14 | 33, 34 | 0d |  | Senior QA Engineer |  |  |
| 37 | 1.3.11 | Design lecturer dashboard to review student performance |  | 3d | 2025-04-15 | 2025-04-17 | 25, 35, 36 | 0d |  | Senior VR Designer/Content Developer | 24h | 888 |
| 38 | 1.3.12 | Design LMS integration requirements |  | 3d | 2025-04-15 | 2025-04-17 | 25, 35, 36 | 0d |  | Senior VR Software Engineer 1 | 24h | 1,200 |
| 39 | 1.3.13 | Design multi-user capabilities |  | 3d | 2025-04-15 | 2025-04-17 | 25, 35, 36 | 0d |  | Senior VR Software Engineer 1 | 24h | 1,200 |
| 40 | 1.3.14 | Gather feedback from lecturer and students |  | 2d | 2025-04-18 | 2025-04-21 | 37, 38, 39 | 0d |  | Senior Product Owner | 16h | 832 |
| 41 | 1.3.15 | Sprint review and Retrospective |  | 1d | 2025-04-22 | 2025-04-22 | 27, 28, 29, 30, 31, 32, 33, 34, 35, 36, 37, 38, 39, 40 | 0d |  | Intermediate Full stack software engineer 1 | 8h | 336 |
| 42 | 1.4 | **Sprint 3** |  | 9d | 2025-04-23 | 2025-05-05 |  | 0d |  |  | 336h | 14,048 |
| 43 | 1.4.1 | Deploy to test Environment |  | 3d | 2025-04-23 | 2025-04-25 | 35, 36, 41 | 2d | 0d | Senior Platforms Engineer | 24h | 1,344 |
| 44 | 1.4.2 | Completion of Deployment to Test Environment | milestone | 0d | 2025-04-25 | 2025-04-25 | 43 | 2d | 0d | Senior Platforms Engineer |  |  |
| 45 | 1.4.3 | Develop lecturer dashboard |  | 3d | 2025-04-23 | 2025-04-25 | 40, 41 | 3d | 0d | Senior VR Software Engineer 2 | 24h | 1,200 |
| 46 | 1.4.4 | Testing of lecturer dashboard |  | 2d | 2025-04-28 | 2025-04-29 | 45 | 3d | 0d | Fullstack software engineer Intern 1 | 16h | 400 |
| 47 | 1.4.5 | Completion lecturer dashboard | milestone | 0d | 2025-04-29 | 2025-04-29 | 46 | 3d |  | Senior QA Engineer |  |  |
| 48 | 1.4.6 | Develop LMS integration |  | 3d | 2025-04-23 | 2025-04-25 | 38, 41 | 0d |  | Senior VR Software Engineer 2 | 24h | 1,200 |
| 49 | 1.4.7 | Testing LMS integration |  | 2d | 2025-04-28 | 2025-04-29 | 48 | 0d |  | Senior QA Engineer | 16h | 592 |
| 50 | 1.4.8 | Completion of LMS integration | milestone | 0d | 2025-04-29 | 2025-04-29 | 49 | 0d |  | Senior QA Engineer; Risk Management Specialist |  |  |
| 51 | 1.4.9 | Develop multi-user capabilities/collaboration (multiple users in the same VR space) |  | 3d | 2025-04-23 | 2025-04-25 | 39, 41 | 0d |  | Senior VR Software Engineer 2 | 24h | 1,200 |
| 52 | 1.4.10 | Testing of multi-user capabilities |  | 2d | 2025-04-28 | 2025-04-29 | 51 | 0d |  | Senior QA Engineer | 16h | 592 |
| 53 | 1.4.11 | Completion of multi-user capabilities | milestone | 0d | 2025-04-29 | 2025-04-29 | 52 | 0d |  | Senior QA Engineer |  |  |
| 54 | 1.4.12 | Design risk management strategy (tech malfunctions, user adoption challenges) |  | 3d | 2025-04-30 | 2025-05-02 | 50, 53 | 0d |  | Risk Management Specialist | 24h | 672 |
| 55 | 1.4.13 | Preparation for preproduction requirements |  | 3d | 2025-04-30 | 2025-05-02 | 35, 36, 50, 53 | 0d |  | Senior Platforms Engineer | 24h | 1,344 |
| 56 | 1.4.14 | Intensive Care Unit - Design Immersive 3d room |  | 3d | 2025-04-23 | 2025-04-25 | 41 | 3d | 0d | Intermediate Full stack software engineer 1 | 24h | 1,008 |
| 57 | 1.4.15 | Intensive Care Unit - Design VR doctor and patient models |  | 3d | 2025-04-23 | 2025-04-25 | 41 | 3d | 0d | Intermediate Full stack software engineer 2 | 24h | 1,008 |
| 58 | 1.4.16 | Intensive Care Unit - Design interactive medical tools |  | 3d | 2025-04-23 | 2025-04-25 | 41 | 3d | 0d | Fullstack software engineer Intern 1 | 24h | 600 |
| 59 | 1.4.17 | Intensive Care Unit - Design role-playing mechanics |  | 3d | 2025-04-23 | 2025-04-25 | 41 | 3d | 0d | Fullstack software engineer Intern 2 | 24h | 600 |
| 60 | 1.4.18 | Gather feedback from lecturers and students |  | 2d | 2025-04-28 | 2025-04-29 | 56, 57, 58, 59 | 3d |  | Senior Product Owner | 16h | 832 |
| 61 | 1.4.19 | Performance testing of Test Environment |  | 3d | 2025-04-28 | 2025-04-30 | 44 | 2d |  | Senior VR Software Engineer 2 | 24h | 1,200 |
| 62 | 1.4.20 | Sprint Review and Retrospective |  | 1d | 2025-05-05 | 2025-05-05 | 43, 44, 45, 46, 47, 48, 49, 50, 51, 52, 53, 54, 55, 56, 57, 58, 59, 60, 61 | 0d |  | Associate full stack software Engineer 1 | 8h | 256 |

| ID | WBS | Task | Type | Duration | Start | Finish | Predecessors | Total slack | Free slack | Resources | Work | Cost |
| --- | --- | --- | --- | --- | --- | --- | --- | --- | --- | --- | --- | --- |
| 63 | 1.5 | **Sprint 4** |  | 13d | 2025-05-06 | 2025-05-22 |  | 0d |  |  | 408h | 15,528 |
| 64 | 1.5.1 | Deploy to Test Environment |  | 1d | 2025-05-06 | 2025-05-06 | 62 | 11d |  | Intermediate Full stack software engineer 1 | 8h | 336 |
| 65 | 1.5.2 | Develop Risk management actions |  | 3d | 2025-05-06 | 2025-05-08 | 54, 62 | 0d |  | Senior VR Software Engineer 2 | 24h | 1,200 |
| 66 | 1.5.3 | Integration Testing |  | 2d | 2025-05-09 | 2025-05-12 | 65, 55 | 0d |  | Intermediate Full stack software engineer 2 | 16h | 672 |
| 67 | 1.5.4 | Completion of Pre-prod requirements |  | 3d | 2025-05-13 | 2025-05-15 | 66, 55 | 0d |  | Senior Platforms Engineer | 24h | 1,344 |
| 68 | 1.5.5 | Deploy to staging environment |  | 2d | 2025-05-16 | 2025-05-19 | 67 | 0d |  | Senior Platforms Engineer | 16h | 896 |
| 69 | 1.5.6 | End to End testing of Staging Environment |  | 2d | 2025-05-20 | 2025-05-21 | 68 | 0d |  | Senior QA Engineer | 16h | 592 |
| 70 | 1.5.7 | Creation of User Training Manual |  | 2d | 2025-05-06 | 2025-05-07 | 62 | 9d | 0d | Trainer | 16h | 608 |
| 71 | 1.5.8 | User Training for Students and Lecturers |  | 1d | 2025-05-08 | 2025-05-08 | 62, 70 | 9d | 0d | Trainer | 8h | 304 |
| 72 | 1.5.9 | Completion of User Training and lecture to Students and Lecturers | milestone | 0d | 2025-05-08 | 2025-05-08 | 71 | 9d |  | Trainer |  |  |
| 73 | 1.5.10 | Deploy to Production | milestone | 0d | 2025-05-21 | 2025-05-21 | 69 | 0d |  | Senior Platforms Engineer |  |  |
| 74 | 1.5.11 | Intensive Care Unit - Develop immersive hospital room |  | 3d | 2025-05-06 | 2025-05-08 | 56, 62 | 7d | 0d | Fullstack software engineer Intern 5 | 24h | 600 |
| 75 | 1.5.12 | Intensive Care Unit - Develop VR doctor and patient models |  | 3d | 2025-05-06 | 2025-05-08 | 57, 62 | 7d | 0d | Fullstack software engineer Intern 4 | 24h | 600 |
| 76 | 1.5.13 | Intensive Care Unit - Develop interactive medical tools |  | 3d | 2025-05-06 | 2025-05-08 | 58, 62 | 7d | 0d | Fullstack software engineer Intern 3 | 24h | 600 |
| 77 | 1.5.14 | Intensive Care Unit - Develop role-playing mechanics |  | 3d | 2025-05-06 | 2025-05-08 | 59, 62 | 7d | 0d | Intermediate Full stack software engineer 2 | 24h | 1,008 |
| 78 | 1.5.15 | Testing Intensive Care Unit |  | 2d | 2025-05-09 | 2025-05-12 | 74, 75, 76, 77 | 7d | 0d | Fullstack software engineer Intern 1 | 16h | 400 |
| 79 | 1.5.16 | Completion of Intensive Care Unit | milestone | 0d | 2025-05-12 | 2025-05-12 | 78 | 7d |  | Senior QA Engineer |  |  |
| 80 | 1.5.17 | Medical Ward - Design Immersive 3d room |  | 3d | 2025-05-06 | 2025-05-08 | 62 | 7d | 0d | Associate full stack software Engineer 1 | 24h | 768 |
| 81 | 1.5.18 | Medical Ward - Design VR Doctor and patient models |  | 3d | 2025-05-06 | 2025-05-08 | 62 | 7d | 0d | Associate full stack software Engineer 2 | 24h | 768 |
| 82 | 1.5.19 | Medical Ward - Design interactive medical tools |  | 3d | 2025-05-06 | 2025-05-08 | 62 | 7d | 0d | Fullstack software engineer Intern 1 | 24h | 600 |
| 83 | 1.5.20 | Medical Ward - Design role-playing mechanics |  | 3d | 2025-05-06 | 2025-05-08 | 62 | 7d | 0d | Fullstack software engineer Intern 2 | 24h | 600 |
| 84 | 1.5.21 | Gather Feedback from lecturer and students |  | 2d | 2025-05-09 | 2025-05-12 | 80, 81, 82, 83 | 7d |  | Senior Product Owner | 16h | 832 |
| 85 | 1.5.22 | Plan performance improvements |  | 3d | 2025-05-06 | 2025-05-08 | 62 | 9d |  | Senior Platforms Engineer; Senior VR Software Engineer 1 | 48h | 2,544 |
| 86 | 1.5.23 | Sprint Review and Retrospective |  | 1d | 2025-05-22 | 2025-05-22 | 64, 65, 66, 67, 68, 69, 70, 71, 72, 73, 74, 75, 76, 77, 78, 79, 80, 81, 82, 83, 84, 85 | 0d |  | Associate full stack software Engineer 2 | 8h | 256 |

| ID | WBS | Task | Type | Duration | Start | Finish | Predecessors | Total slack | Resources | Work | Cost |
| --- | --- | --- | --- | --- | --- | --- | --- | --- | --- | --- | --- |
| 87 | 1.6 | **Sprint 5** |  | 6d | 2025-05-23 | 2025-05-30 |  | 0d |  | 264h | 8,672 |
| 88 | 1.6.1 | Deploy to Test Environment |  | 1d | 2025-05-23 | 2025-05-23 | 86 | 4d | Associate full stack software Engineer 1 | 8h | 256 |
| 89 | 1.6.2 | Develop performance improvements |  | 3d | 2025-05-23 | 2025-05-27 | 85, 86 | 2d | Intermediate Full stack software engineer 1 | 24h | 1,008 |
| 90 | 1.6.3 | Medical Ward - Develop Immersive 3d room |  | 3d | 2025-05-23 | 2025-05-27 | 80, 86 | 0d | Associate full stack software Engineer 2 | 24h | 768 |
| 91 | 1.6.4 | Medical Ward - Develop VR Doctor and patient models |  | 3d | 2025-05-23 | 2025-05-27 | 81, 86 | 0d | Fullstack software engineer Intern 1 | 24h | 600 |
| 92 | 1.6.5 | Medical Ward - Develop interactive medical tools |  | 3d | 2025-05-23 | 2025-05-27 | 82, 86 | 0d | Fullstack software engineer Intern 2 | 24h | 600 |
| 93 | 1.6.6 | Medical Ward - Develop role-playing mechanics |  | 3d | 2025-05-23 | 2025-05-27 | 83, 86 | 0d | Fullstack software engineer Intern 3 | 24h | 600 |
| 94 | 1.6.7 | Testing of Medical Ward |  | 2d | 2025-05-28 | 2025-05-29 | 90, 91, 92, 93 | 0d | Fullstack software engineer Intern 4 | 16h | 400 |
| 95 | 1.6.8 | Completion of Medical Ward | milestone | 0d | 2025-05-29 | 2025-05-29 | 94 | 0d | Senior QA Engineer |  |  |
| 96 | 1.6.9 | Operating Room - Design Immersive 3d room |  | 3d | 2025-05-23 | 2025-05-27 | 86 | 0d | Fullstack software engineer Intern 5 | 24h | 600 |
| 97 | 1.6.10 | Operating Room - Design VR Doctor and patient models |  | 3d | 2025-05-23 | 2025-05-27 | 86 | 0d | Fullstack software engineer Intern 4 | 24h | 600 |
| 98 | 1.6.11 | Operating Room - Design interactive medical tools |  | 3d | 2025-05-23 | 2025-05-27 | 86 | 0d | Intermediate Full stack software engineer 2 | 24h | 1,008 |
| 99 | 1.6.12 | Operating Room - Design role-playing mechanics |  | 3d | 2025-05-23 | 2025-05-27 | 86 | 0d | Senior VR Software Engineer 1 | 24h | 1,200 |
| 100 | 1.6.13 | Gather Feedback from lecturer and students |  | 2d | 2025-05-28 | 2025-05-29 | 96, 97, 98, 99 | 0d | Senior Product Owner | 16h | 832 |
| 101 | 1.6.14 | Sprint Review and Retrospective |  | 1d | 2025-05-30 | 2025-05-30 | 88, 89, 90, 91, 92, 93, 94, 95, 96, 97, 98, 99, 100 | 0d | Fullstack software engineer Intern 1 | 8h | 200 |
| 102 | 1.7 | **Sprint 6** |  | 6d | 2025-06-02 | 2025-06-09 |  | 0d |  | 240h | 8,728 |
| 103 | 1.7.1 | Deploy to Test Environment |  | 1d | 2025-06-02 | 2025-06-02 | 101 | 4d | Fullstack software engineer Intern 2 | 8h | 200 |
| 104 | 1.7.2 | Operating Room - Develop Immersive 3d room |  | 3d | 2025-06-02 | 2025-06-04 | 96, 101 | 0d | Fullstack software engineer Intern 3 | 24h | 600 |
| 105 | 1.7.3 | Operating Room - Develop VR Doctor and patient models |  | 3d | 2025-06-02 | 2025-06-04 | 97, 101 | 0d | Fullstack software engineer Intern 4 | 24h | 600 |
| 106 | 1.7.4 | Operating Room - Develop interactive medical tools |  | 3d | 2025-06-02 | 2025-06-04 | 98, 101 | 0d | Fullstack software engineer Intern 5 | 24h | 600 |
| 107 | 1.7.5 | Operating Room - Develop role-playing mechanics |  | 3d | 2025-06-02 | 2025-06-04 | 99, 101 | 0d | Associate full stack software Engineer 2 | 24h | 768 |
| 108 | 1.7.6 | Testing of Operating Room |  | 2d | 2025-06-05 | 2025-06-06 | 104, 105, 106, 107 | 0d | Associate full stack software Engineer 1 | 16h | 512 |
| 109 | 1.7.7 | Completion of Operating Room | milestone | 0d | 2025-06-06 | 2025-06-06 | 108 | 0d | Senior QA Engineer |  |  |
| 110 | 1.7.8 | Maternity Care - Design Immersive 3d room |  | 3d | 2025-06-02 | 2025-06-04 | 101 | 0d | Intermediate Full stack software engineer 1 | 24h | 1,008 |
| 111 | 1.7.9 | Maternity Care - Design VR Doctor and patient models |  | 3d | 2025-06-02 | 2025-06-04 | 101 | 0d | Intermediate Full stack software engineer 2 | 24h | 1,008 |
| 112 | 1.7.10 | Maternity Care - Design interactive medical tools |  | 3d | 2025-06-02 | 2025-06-04 | 101 | 0d | Senior VR Software Engineer 1 | 24h | 1,200 |
| 113 | 1.7.11 | Maternity Care - Design role-playing mechanics |  | 3d | 2025-06-02 | 2025-06-04 | 101 | 0d | Senior VR Software Engineer 2 | 24h | 1,200 |
| 114 | 1.7.12 | Gather Feedback from lecturer and students |  | 2d | 2025-06-05 | 2025-06-06 | 110, 111, 112, 113 | 0d | Senior Product Owner | 16h | 832 |
| 115 | 1.7.13 | Sprint Review and Retrospective |  | 1d | 2025-06-09 | 2025-06-09 | 103, 104, 105, 106, 107, 108, 109, 110, 111, 112, 113, 114 | 0d | Fullstack software engineer Intern 5 | 8h | 200 |

| ID | WBS | Task | Type | Duration | Start | Finish | Predecessors | Total slack | Resources | Work | Cost |
| --- | --- | --- | --- | --- | --- | --- | --- | --- | --- | --- | --- |
| 116 | 1.8 | **Sprint 7** |  | 6d | 2025-06-10 | 2025-06-17 |  | 0d |  | 240h | 8,784 |
| 117 | 1.8.1 | Deploy to Test Environment |  | 1d | 2025-06-10 | 2025-06-10 | 115 | 4d | Fullstack software engineer Intern 4 | 8h | 200 |
| 118 | 1.8.2 | Maternity Care - Develop Immersive 3d room |  | 3d | 2025-06-10 | 2025-06-12 | 110, 115 | 0d | Fullstack software engineer Intern 3 | 24h | 600 |
| 119 | 1.8.3 | Maternity Care - Develop VR Doctor and patient models |  | 3d | 2025-06-10 | 2025-06-12 | 111, 115 | 0d | Fullstack software engineer Intern 2 | 24h | 600 |
| 120 | 1.8.4 | Maternity Care - Develop interactive medical tools |  | 3d | 2025-06-10 | 2025-06-12 | 112, 115 | 0d | Fullstack software engineer Intern 1 | 24h | 600 |
| 121 | 1.8.5 | Maternity Care - Develop role-playing mechanics |  | 3d | 2025-06-10 | 2025-06-12 | 113, 115 | 0d | Associate full stack software Engineer 2 | 24h | 768 |
| 122 | 1.8.6 | Testing of Maternity Care |  | 2d | 2025-06-13 | 2025-06-16 | 118, 119, 120, 121 | 0d | Associate full stack software Engineer 1 | 16h | 512 |
| 123 | 1.8.7 | Completion of Maternity Care | milestone | 0d | 2025-06-16 | 2025-06-16 | 122 | 0d | Senior QA Engineer |  |  |
| 124 | 1.8.8 | Behavioral and Mental Health Room - Design Immersive 3d room |  | 3d | 2025-06-10 | 2025-06-12 | 115 | 0d | Intermediate Full stack software engineer 2 | 24h | 1,008 |
| 125 | 1.8.9 | Behavioral and Mental Health Room - Design VR Doctor and patient models |  | 3d | 2025-06-10 | 2025-06-12 | 115 | 0d | Intermediate Full stack software engineer 1 | 24h | 1,008 |
| 126 | 1.8.10 | Behavioral and Mental Health Room - Design interactive medical tools |  | 3d | 2025-06-10 | 2025-06-12 | 115 | 0d | Senior VR Software Engineer 2 | 24h | 1,200 |
| 127 | 1.8.11 | Behavioral and Mental Health Room - Design role-playing mechanics |  | 3d | 2025-06-10 | 2025-06-12 | 115 | 0d | Senior VR Software Engineer 1 | 24h | 1,200 |
| 128 | 1.8.12 | Gather Feedback from lecturer and students |  | 2d | 2025-06-13 | 2025-06-16 | 124, 125, 126, 127 | 0d | Senior Product Owner | 16h | 832 |
| 129 | 1.8.13 | Sprint Review and Retrospective |  | 1d | 2025-06-17 | 2025-06-17 | 117, 118, 119, 120, 121, 122, 123, 124, 125, 126, 127, 128 | 0d | Associate full stack software Engineer 1 | 8h | 256 |
| 130 | 1.9 | **Sprint 8** |  | 6d | 2025-06-18 | 2025-06-25 |  | 0d |  | 240h | 8,480 |
| 131 | 1.9.1 | Deploy to Higher Environment |  | 1d | 2025-06-18 | 2025-06-18 | 129 | 4d | Intermediate Full stack software engineer 1 | 8h | 336 |
| 132 | 1.9.2 | Behavioral and Mental Health Room - Develop Immersive 3d room |  | 3d | 2025-06-18 | 2025-06-20 | 124, 129 | 0d | Senior VR Software Engineer 2 | 24h | 1,200 |
| 133 | 1.9.3 | Behavioral and Mental Health Room - Develop VR Doctor and patient models |  | 3d | 2025-06-18 | 2025-06-20 | 125, 129 | 0d | Associate full stack software Engineer 2 | 24h | 768 |
| 134 | 1.9.4 | Behavioral and Mental Health Room - Develop interactive medical tools |  | 3d | 2025-06-18 | 2025-06-20 | 126, 129 | 0d | Intermediate Full stack software engineer 2 | 24h | 1,008 |
| 135 | 1.9.5 | Behavioral and Mental Health Room - Develop role-playing mechanics |  | 3d | 2025-06-18 | 2025-06-20 | 127, 129 | 0d | Fullstack software engineer Intern 1 | 24h | 600 |
| 136 | 1.9.6 | Testing of Behavioral and Mental Health Room |  | 2d | 2025-06-23 | 2025-06-24 | 132, 133, 134, 135 | 0d | Fullstack software engineer Intern 2 | 16h | 400 |
| 137 | 1.9.7 | Completion of Behavioral and Mental Health Room | milestone | 0d | 2025-06-24 | 2025-06-24 | 136 | 0d | Senior QA Engineer |  |  |
| 138 | 1.9.8 | Family Room - Design Immersive 3d room |  | 3d | 2025-06-18 | 2025-06-20 | 129 | 0d | Fullstack software engineer Intern 3 | 24h | 600 |
| 139 | 1.9.9 | Family Room - Design VR Doctor and patient models |  | 3d | 2025-06-18 | 2025-06-20 | 129 | 0d | Fullstack software engineer Intern 4 | 24h | 600 |
| 140 | 1.9.10 | Family Room - Design interactive medical tools |  | 3d | 2025-06-18 | 2025-06-20 | 129 | 0d | Fullstack software engineer Intern 5 | 24h | 600 |
| 141 | 1.9.11 | Family Room - Design role-playing mechanics |  | 3d | 2025-06-18 | 2025-06-20 | 129 | 0d | Senior VR Software Engineer 1 | 24h | 1,200 |
| 142 | 1.9.12 | Gather Feedback from lecturer and students |  | 2d | 2025-06-23 | 2025-06-24 | 138, 139, 140, 141 | 0d | Senior Product Owner | 16h | 832 |
| 143 | 1.9.13 | Sprint Review and Retrospective |  | 1d | 2025-06-25 | 2025-06-25 | 131, 132, 133, 134, 135, 136, 137, 138, 139, 140, 141, 142 | 0d | Intermediate Full stack software engineer 2 | 8h | 336 |

| ID | WBS | Task | Type | Duration | Start | Finish | Predecessors | Total slack | Free slack | Resources | Work | Cost |
| --- | --- | --- | --- | --- | --- | --- | --- | --- | --- | --- | --- | --- |
| 144 | 1.10 | **Sprint 9** |  | 6d | 2025-06-26 | 2025-07-03 |  | 0d |  |  | 240h | 7,872 |
| 145 | 1.10.1 | Deploy to Higher Environment |  | 1d | 2025-06-26 | 2025-06-26 | 143 | 4d |  | Fullstack software engineer Intern 5 | 8h | 200 |
| 146 | 1.10.2 | Family Room - Develop Immersive 3d room |  | 3d | 2025-06-26 | 2025-06-30 | 138, 143 | 0d |  | Fullstack software engineer Intern 4 | 24h | 600 |
| 147 | 1.10.3 | Family Room - Develop VR Doctor and patient models |  | 3d | 2025-06-26 | 2025-06-30 | 139, 143 | 0d |  | Fullstack software engineer Intern 3 | 24h | 600 |
| 148 | 1.10.4 | Family Room - Develop interactive medical tools |  | 3d | 2025-06-26 | 2025-06-30 | 140, 143 | 0d |  | Fullstack software engineer Intern 2 | 24h | 600 |
| 149 | 1.10.5 | Family Room - Develop role-playing mechanics |  | 3d | 2025-06-26 | 2025-06-30 | 141, 143 | 0d |  | Fullstack software engineer Intern 1 | 24h | 600 |
| 150 | 1.10.6 | Testing of Family Room |  | 2d | 2025-07-01 | 2025-07-02 | 146, 147, 148, 149 | 0d |  | Associate full stack software Engineer 1 | 16h | 512 |
| 151 | 1.10.7 | Completion of Family Room | milestone | 0d | 2025-07-02 | 2025-07-02 | 150 | 0d |  | Senior QA Engineer |  |  |
| 152 | 1.10.8 | Neonatal Intensive Care Unit (NICU) - Design Immersive 3d room |  | 3d | 2025-06-26 | 2025-06-30 | 143 | 0d |  | Associate full stack software Engineer 2 | 24h | 768 |
| 153 | 1.10.9 | Neonatal Intensive Care Unit (NICU) - Design VR Doctor and patient models |  | 3d | 2025-06-26 | 2025-06-30 | 143 | 0d |  | Intermediate Full stack software engineer 1 | 24h | 1,008 |
| 154 | 1.10.10 | Neonatal Intensive Care Unit (NICU) - Design interactive medical tools |  | 3d | 2025-06-26 | 2025-06-30 | 143 | 0d |  | Intermediate Full stack software engineer 2 | 24h | 1,008 |
| 155 | 1.10.11 | Neonatal Intensive Care Unit (NICU) - Design role-playing mechanics |  | 3d | 2025-06-26 | 2025-06-30 | 143 | 0d |  | Senior VR Designer/Content Developer | 24h | 888 |
| 156 | 1.10.12 | Gather Feedback from lecturer and students |  | 2d | 2025-07-01 | 2025-07-02 | 152, 153, 154, 155 | 0d |  | Senior Product Owner | 16h | 832 |
| 157 | 1.10.13 | Sprint Review and Retrospective |  | 1d | 2025-07-03 | 2025-07-03 | 145, 146, 147, 148, 149, 150, 151, 152, 153, 154, 155, 156 | 0d |  | Associate full stack software Engineer 2 | 8h | 256 |
| 158 | 1.11 | **Sprint 10** |  | 14d | 2025-07-04 | 2025-07-23 |  | 0d |  |  | 216h | 7,800 |
| 159 | 1.11.1 | Deploy to Higher Environment |  | 1d | 2025-07-04 | 2025-07-04 | 157 | 12d |  | Intermediate Full stack software engineer 1 | 8h | 336 |
| 160 | 1.11.2 | Neonatal Intensive Care Unit (NICU) - Develop Immersive 3d room |  | 3d | 2025-07-04 | 2025-07-08 | 152, 157 | 0d |  | Fullstack software engineer Intern 5 | 24h | 600 |
| 161 | 1.11.3 | Neonatal Intensive Care Unit (NICU) - Develop VR Doctor and patient models |  | 3d | 2025-07-04 | 2025-07-08 | 153, 157 | 0d |  | Fullstack software engineer Intern 4 | 24h | 600 |
| 162 | 1.11.4 | Neonatal Intensive Care Unit (NICU) - Develop interactive medical tools |  | 3d | 2025-07-04 | 2025-07-08 | 154, 157 | 0d |  | Fullstack software engineer Intern 3 | 24h | 600 |
| 163 | 1.11.5 | Neonatal Intensive Care Unit (NICU) - Develop role-playing mechanics |  | 3d | 2025-07-04 | 2025-07-08 | 155, 157 | 0d |  | Fullstack software engineer Intern 2 | 24h | 600 |
| 164 | 1.11.6 | Testing of Neonatal Intensive Care Unit (NICU) |  | 2d | 2025-07-09 | 2025-07-10 | 160, 161, 162, 163 | 0d |  | Intermediate Full stack software engineer 1 | 16h | 672 |
| 165 | 1.11.7 | Completion of Neonatal Intensive Care Unit (NICU) | milestone | 0d | 2025-07-10 | 2025-07-10 | 164 | 0d |  | Senior QA Engineer |  |  |
| 166 | 1.11.8 | Preparation and Completion of Pre-prod requirements |  | 2d | 2025-07-11 | 2025-07-14 | 157, 165 | 0d |  | Senior Platforms Engineer | 16h | 896 |
| 167 | 1.11.9 | Deploy to staging environment |  | 1d | 2025-07-15 | 2025-07-15 | 166 | 0d |  | Senior Platforms Engineer | 8h | 448 |
| 168 | 1.11.10 | End to End testing of Staging Environment |  | 3d | 2025-07-16 | 2025-07-18 | 167 | 0d |  | Senior QA Engineer | 24h | 888 |
| 169 | 1.11.11 | Update of User Training Manual |  | 2d | 2025-07-11 | 2025-07-14 | 165 | 5d | 0d | Trainer | 16h | 608 |
| 170 | 1.11.12 | User Training for Students and Lecturers |  | 1d | 2025-07-15 | 2025-07-15 | 169 | 5d | 0d | Trainer | 8h | 304 |
| 171 | 1.11.13 | Completion of Manual and User Training to Students and Lecturers | milestone | 0d | 2025-07-15 | 2025-07-15 | 169, 170 | 5d |  | Trainer |  |  |
| 172 | 1.11.14 | Deploy to Production | milestone | 0d | 2025-07-18 | 2025-07-18 | 168 | 0d |  | Senior Platforms Engineer |  |  |
| 173 | 1.11.15 | Activities for Project Closure |  | 2d | 2025-07-21 | 2025-07-22 | 172 | 0d |  | Engineering Manager | 16h | 848 |
| 174 | 1.11.16 | Sprint Review and Retrospective |  | 1d | 2025-07-23 | 2025-07-23 | 159, 160, 161, 162, 163, 164, 165, 166, 167, 168, 169, 170, 171, 172, 173 | 0d |  | Senior VR Software Engineer 1 | 8h | 400 |
| 175 | 1.11.17 | Project Closure | milestone | 0d | 2025-07-23 | 2025-07-23 | 173, 174 | 0d |  | Engineering Manager |  |  |
