Schedule from MS Project, 2025-03-12 to 2025-07-24, costs in $.

## Calendars

- Standard: Mon-Fri 08:00-12:00, 13:00-17:00; Sat-Sun off.

## Resources

| Resource | Rate |
| --- | --- |
| Laptops | 1300 |
| Equipments |  |
| VR Hardware | 650 |
| Cloud Subscription | 328 |
| Unreal Engine License |  |
| HR Manager | 58 |
| Engineering Manager | 53 |
| Senior Platforms Engineer | 56 |
| Risk Management Specialist | 28 |
| Cultural Consultant | 42 |
| Senior Product Owner | 52 |
| Senior VR Software Engineer 1 | 50 |
| Associate full stack software Engineer 2 | 32 |
| Fullstack software engineer Intern 5 | 25 |
| Senior QA Engineer | 37 |
| Senior VR Designer/Content Developer | 37 |
| Trainer | 38 |
| Senior VR Software Engineer 2 | 50 |
| Intermediate Full stack software engineer 2 | 42 |
| Intermediate Full stack software engineer 1 | 42 |
| Associate full stack software Engineer 1 | 32 |
| Fullstack software engineer Intern 4 | 25 |
| Fullstack software engineer Intern 3 | 25 |
| Fullstack software engineer Intern 2 | 25 |
| Fullstack software engineer Intern 1 | 25 |
| Electricity |  |
| Rent |  |
| Accessories |  |
| Jira | 172 |

## Schedule

| ID | WBS | Task | Type | Duration | Start | Finish | Predecessors | Total slack | Free slack | Resources | Work | Cost |
| --- | --- | --- | --- | --- | --- | --- | --- | --- | --- | --- | --- | --- |
| 1 | 1 | **OPAIC MedVR** |  | 97d | 2025-03-12 | 2025-07-24 |  | 0d |  |  | 2904h | 113,704 |
| 2 | 1.1 | **Sprint 0** |  | 10d | 2025-03-12 | 2025-03-25 |  | 0d |  |  | 272h | 14,448 |
| 3 | 1.1.1 | Define project Scope, goals, and success criteria |  | 3d | 2025-03-12 | 2025-03-14 |  | 0d |  | Engineering Manager | 24h | 1,272 |
| 4 | 1.1.2 | Feasibility Study |  | 3d | 2025-03-12 | 2025-03-14 |  | 94d |  | Senior Product Owner | 24h | 1,248 |
| 5 | 1.1.3 | Hiring employees |  | 5d | 2025-03-17 | 2025-03-21 | 3 | 1d |  | HR Manager | 40h | 2,320 |
| 6 | 1.1.4 | Define Version Control System |  | 1d | 2025-03-17 | 2025-03-17 | 3 | 0d |  | Senior Platforms Engineer | 8h | 448 |
| 7 | 1.1.5 | Define Cloud Storage |  | 5d | 2025-03-18 | 2025-03-24 | 3, 6 | 0d |  | Senior Platforms Engineer | 40h | 2,240 |
| 8 | 1.1.6 | Setup development and testing environments for VR |  | 5d | 2025-03-17 | 2025-03-21 | 3 | 1d |  | Senior Platforms Engineer | 40h | 2,240 |
| 9 | 1.1.7 | Identify VR hardware and software (headsets, controllers) |  | 5d | 2025-03-17 | 2025-03-21 | 3 | 1d |  | Senior VR Software Engineer 1 | 40h | 2,000 |
| 10 | 1.1.8 | Identify Project Management tools (Jira) |  | 3d | 2025-03-17 | 2025-03-19 | 3 | 3d |  | Senior Product Owner | 24h | 1,248 |
| 11 | 1.1.9 | Conduct research on culturally responsive healthcare training |  | 3d | 2025-03-17 | 2025-03-19 | 3 | 3d |  | Cultural Consultant | 24h | 1,008 |
| 12 | 1.1.10 | Sprint Review and Retrospective |  | 1d | 2025-03-25 | 2025-03-25 | 3, 5, 6, 7, 8, 9, 10, 11 | 0d |  | Engineering Manager | 8h | 424 |
| 13 | 1.2 | **Sprint 1** |  | 9d | 2025-03-26 | 2025-04-07 |  | 0d |  |  | 192h | 8,240 |
| 14 | 1.2.1 | Design wireframes and UI/UX flow for the platform |  | 3d | 2025-03-26 | 2025-03-28 | 3, 12 | 0d |  | Senior VR Designer/Content Developer | 24h | 888 |
| 15 | 1.2.2 | Emergency Room - Design immersive 3d room |  | 3d | 2025-03-26 | 2025-03-28 | 3, 12 | 0d |  | Senior VR Software Engineer 1 | 24h | 1,200 |
| 16 | 1.2.3 | Emergency Room - Design VR doctor and patient models |  | 3d | 2025-03-26 | 2025-03-28 | 3, 12 | 0d |  | Senior VR Software Engineer 2 | 24h | 1,200 |
| 17 | 1.2.4 | Emergency Room - Design interactive medical tools |  | 3d | 2025-03-26 | 2025-03-28 | 3, 12 | 0d |  | Intermediate Full stack software engineer 1 | 24h | 1,008 |
| 18 | 1.2.5 | Emergency Room - Design Role-playing mechanics (medical scenarios) |  | 3d | 2025-03-26 | 2025-03-28 | 3, 12 | 0d |  | Intermediate Full stack software engineer 2 | 24h | 1,008 |
| 19 | 1.2.6 | Design culturally inclusive assets |  | 3d | 2025-03-26 | 2025-03-28 | 3, 12 | 0d |  | Cultural Consultant | 24h | 1,008 |
| 20 | 1.2.7 | Gather Feedback from lecturer and students. |  | 2d | 2025-03-31 | 2025-04-01 | 14, 15, 16, 17, 18, 19 | 0d |  | Senior Product Owner | 16h | 832 |
| 21 | 1.2.8 | Design risk Management strategy (tech malfunctions, user adoption challenges) |  | 3d | 2025-04-02 | 2025-04-04 | 20 | 0d |  | Risk Management Specialist | 24h | 672 |
| 22 | 1.2.9 | Sprint Review and Retrospective |  | 1d | 2025-04-07 | 2025-04-07 | 14, 15, 16, 17, 18, 19, 20, 21 | 0d |  | Engineering Manager | 8h | 424 |
| 23 | 1.3 | **Sprint 2** |  | 14d | 2025-04-07 | 2025-04-24 |  | 0d |  |  | 264h | 11,656 |
| 24 | 1.3.1 | Develop UI/UX flows |  | 3d | 2025-04-07 | 2025-04-09 | 14, 19, 20, 21 | 3d | 0d | Senior VR Software Engineer 1 | 24h | 1,200 |
| 25 | 1.3.2 | Testing UI/UX flows |  | 2d | 2025-04-10 | 2025-04-11 | 24 | 3d |  | Senior QA Engineer | 16h | 592 |
| 26 | 1.3.3 | Emergency Room - Develop immersive Room |  | 3d | 2025-04-08 | 2025-04-10 | 15, 22 | 0d |  | Senior VR Software Engineer 2 | 24h | 1,200 |
| 27 | 1.3.4 | Emergency Room - Develop VR doctor and patient models |  | 3d | 2025-04-08 | 2025-04-10 | 16, 22 | 0d |  | Intermediate Full stack software engineer 1 | 24h | 1,008 |
| 28 | 1.3.5 | Emergency Room - Develop interactive medical tools |  | 3d | 2025-04-08 | 2025-04-10 | 17, 22 | 0d |  | Intermediate Full stack software engineer 2 | 24h | 1,008 |
| 29 | 1.3.6 | Emergency Room - Develop role-playing mechanics |  | 3d | 2025-04-08 | 2025-04-10 | 18, 22 | 0d |  | Associate full stack software Engineer 1 | 24h | 768 |
| 30 | 1.3.7 | Testing of Emergency Room |  | 2d | 2025-04-11 | 2025-04-14 | 26, 27, 28, 29 | 0d |  | Senior QA Engineer | 16h | 592 |
| 31 | 1.3.8 | Gather feedback from lecturer and students |  | 2d | 2025-04-15 | 2025-04-16 | 30 | 0d |  | Senior Product Owner | 16h | 832 |
| 32 | 1.3.9 | Completion of UI/UX flows | milestone | 0d | 2025-04-16 | 2025-04-16 | 25, 31 | 0d |  | Senior QA Engineer |  |  |
| 33 | 1.3.10 | Completion of Emergency Room | milestone | 0d | 2025-04-16 | 2025-04-16 | 30, 31 | 0d |  | Senior QA Engineer |  |  |
| 34 | 1.3.11 | Design lecturer dashboard to review student performance |  | 3d | 2025-04-17 | 2025-04-21 | 22, 32, 33 | 0d |  | Senior VR Designer/Content Developer | 24h | 888 |
| 35 | 1.3.12 | Design LMS integration requirements |  | 3d | 2025-04-17 | 2025-04-21 | 22, 32, 33 | 0d |  | Senior VR Software Engineer 1 | 24h | 1,200 |
| 36 | 1.3.13 | Design multi-user capabilities |  | 3d | 2025-04-17 | 2025-04-21 | 22, 32, 33 | 0d |  | Senior VR Software Engineer 1 | 24h | 1,200 |
| 37 | 1.3.14 | Gather feedback from lecturer and students |  | 2d | 2025-04-22 | 2025-04-23 | 34, 35, 36 | 0d |  | Senior Product Owner | 16h | 832 |
| 38 | 1.3.15 | Sprint review and Retrospective |  | 1d | 2025-04-24 | 2025-04-24 | 24, 25, 26, 27, 28, 29, 30, 31, 32, 33, 34, 35, 36, 37 | 0d |  | Intermediate Full stack software engineer 1 | 8h | 336 |

| ID | WBS | Task | Type | Duration | Start | Finish | Predecessors | Total slack | Free slack | Resources | Work | Cost |
| --- | --- | --- | --- | --- | --- | --- | --- | --- | --- | --- | --- | --- |
| 39 | 1.4 | **Sprint 3** |  | 9d | 2025-04-25 | 2025-05-07 |  | 0d |  |  | 336h | 14,048 |
| 40 | 1.4.1 | Deploy to test Environment |  | 3d | 2025-04-25 | 2025-04-29 | 32, 33, 38 | 2d | 0d | Senior Platforms Engineer | 24h | 1,344 |
| 41 | 1.4.2 | Completion of Deployment to Test Environment | milestone | 0d | 2025-04-29 | 2025-04-29 | 40 | 2d | 0d | Senior Platforms Engineer |  |  |
| 42 | 1.4.3 | Develop lecturer dashboard |  | 3d | 2025-04-25 | 2025-04-29 | 37, 38 | 3d | 0d | Senior VR Software Engineer 2 | 24h | 1,200 |
| 43 | 1.4.4 | Testing of lecturer dashboard |  | 2d | 2025-04-30 | 2025-05-01 | 42 | 3d | 0d | Fullstack software engineer Intern 1 | 16h | 400 |
| 44 | 1.4.5 | Completion lecturer dashboard | milestone | 0d | 2025-05-01 | 2025-05-01 | 43 | 3d |  | Senior QA Engineer |  |  |
| 45 | 1.4.6 | Develop LMS integration |  | 3d | 2025-04-25 | 2025-04-29 | 35, 38 | 0d |  | Senior VR Software Engineer 2 | 24h | 1,200 |
| 46 | 1.4.7 | Testing LMS integration |  | 2d | 2025-04-30 | 2025-05-01 | 45 | 0d |  | Senior QA Engineer | 16h | 592 |
| 47 | 1.4.8 | Completion of LMS integration | milestone | 0d | 2025-05-01 | 2025-05-01 | 46 | 0d |  | Senior QA Engineer; Risk Management Specialist |  |  |
| 48 | 1.4.9 | Develop multi-user capabilities/collaboration (multiple users in the same VR space) |  | 3d | 2025-04-25 | 2025-04-29 | 36, 38 | 0d |  | Senior VR Software Engineer 2 | 24h | 1,200 |
| 49 | 1.4.10 | Testing of multi-user capabilities |  | 2d | 2025-04-30 | 2025-05-01 | 48 | 0d |  | Senior QA Engineer | 16h | 592 |
| 50 | 1.4.11 | Completion of multi-user capabilities | milestone | 0d | 2025-05-01 | 2025-05-01 | 49 | 0d |  | Senior QA Engineer |  |  |
| 51 | 1.4.12 | Design risk management strategy (tech malfunctions, user adoption challenges) |  | 3d | 2025-05-02 | 2025-05-06 | 47, 50 | 0d |  | Risk Management Specialist | 24h | 672 |
| 52 | 1.4.13 | Preparation for preproduction requirements |  | 3d | 2025-05-02 | 2025-05-06 | 32, 33, 47, 50 | 0d |  | Senior Platforms Engineer | 24h | 1,344 |
| 53 | 1.4.14 | Intensive Care Unit - Design Immersive 3d room |  | 3d | 2025-04-25 | 2025-04-29 | 38 | 3d | 0d | Intermediate Full stack software engineer 1 | 24h | 1,008 |
| 54 | 1.4.15 | Intensive Care Unit - Design VR doctor and patient models |  | 3d | 2025-04-25 | 2025-04-29 | 38 | 3d | 0d | Intermediate Full stack software engineer 2 | 24h | 1,008 |
| 55 | 1.4.16 | Intensive Care Unit - Design interactive medical tools |  | 3d | 2025-04-25 | 2025-04-29 | 38 | 3d | 0d | Fullstack software engineer Intern 1 | 24h | 600 |
| 56 | 1.4.17 | Intensive Care Unit - Design role-playing mechanics |  | 3d | 2025-04-25 | 2025-04-29 | 38 | 3d | 0d | Fullstack software engineer Intern 2 | 24h | 600 |
| 57 | 1.4.18 | Gather feedback from lecturers and students |  | 2d | 2025-04-30 | 2025-05-01 | 53, 54, 55, 56 | 3d |  | Senior Product Owner | 16h | 832 |
| 58 | 1.4.19 | Performance testing of Test Environment |  | 3d | 2025-04-30 | 2025-05-02 | 41 | 2d |  | Senior VR Software Engineer 2 | 24h | 1,200 |
| 59 | 1.4.20 | Sprint Review and Retrospective |  | 1d | 2025-05-07 | 2025-05-07 | 40, 41, 42, 43, 44, 45, 46, 47, 48, 49, 50, 51, 52, 53, 54, 55, 56, 57, 58 | 0d |  | Associate full stack software Engineer 1 | 8h | 256 |
| 60 | 1.5 | **Sprint 4** |  | 13d | 2025-05-08 | 2025-05-26 |  | 0d |  |  | 408h | 15,528 |
| 61 | 1.5.1 | Deploy to Test Environment |  | 1d | 2025-05-08 | 2025-05-08 | 59 | 11d |  | Intermediate Full stack software engineer 1 | 8h | 336 |
| 62 | 1.5.2 | Develop Risk management actions |  | 3d | 2025-05-08 | 2025-05-12 | 51, 59 | 0d |  | Senior VR Software Engineer 2 | 24h | 1,200 |
| 63 | 1.5.3 | Integration Testing |  | 2d | 2025-05-13 | 2025-05-14 | 62, 52 | 0d |  | Intermediate Full stack software engineer 2 | 16h | 672 |
| 64 | 1.5.4 | Completion of Pre-prod requirements |  | 3d | 2025-05-15 | 2025-05-19 | 63, 52 | 0d |  | Senior Platforms Engineer | 24h | 1,344 |
| 65 | 1.5.5 | Deploy to staging environment |  | 2d | 2025-05-20 | 2025-05-21 | 64 | 0d |  | Senior Platforms Engineer | 16h | 896 |
| 66 | 1.5.6 | End to End testing of Staging Environment |  | 2d | 2025-05-22 | 2025-05-23 | 65 | 0d |  | Senior QA Engineer | 16h | 592 |
| 67 | 1.5.7 | Creation of User Training Manual |  | 2d | 2025-05-08 | 2025-05-09 | 59 | 9d | 0d | Trainer | 16h | 608 |
| 68 | 1.5.8 | User Training for Students and Lecturers |  | 1d | 2025-05-12 | 2025-05-12 | 59, 67 | 9d | 0d | Trainer | 8h | 304 |
| 69 | 1.5.9 | Completion of User Training and lecture to Students and Lecturers | milestone | 0d | 2025-05-12 | 2025-05-12 | 68 | 9d |  | Trainer |  |  |
| 70 | 1.5.10 | Deploy to Production | milestone | 0d | 2025-05-23 | 2025-05-23 | 66 | 0d |  | Senior Platforms Engineer |  |  |
| 71 | 1.5.11 | Intensive Care Unit - Develop immersive hospital room |  | 3d | 2025-05-08 | 2025-05-12 | 53, 59 | 7d | 0d | Fullstack software engineer Intern 5 | 24h | 600 |
| 72 | 1.5.12 | Intensive Care Unit - Develop VR doctor and patient models |  | 3d | 2025-05-08 | 2025-05-12 | 54, 59 | 7d | 0d | Fullstack software engineer Intern 4 | 24h | 600 |
| 73 | 1.5.13 | Intensive Care Unit - Develop interactive medical tools |  | 3d | 2025-05-08 | 2025-05-12 | 55, 59 | 7d | 0d | Fullstack software engineer Intern 3 | 24h | 600 |
| 74 | 1.5.14 | Intensive Care Unit - Develop role-playing mechanics |  | 3d | 2025-05-08 | 2025-05-12 | 56, 59 | 7d | 0d | Intermediate Full stack software engineer 2 | 24h | 1,008 |
| 75 | 1.5.15 | Testing Intensive Care Unit |  | 2d | 2025-05-13 | 2025-05-14 | 71, 72, 73, 74 | 7d | 0d | Fullstack software engineer Intern 1 | 16h | 400 |
| 76 | 1.5.16 | Completion of Intensive Care Unit | milestone | 0d | 2025-05-14 | 2025-05-14 | 75 | 7d |  | Senior QA Engineer |  |  |
| 77 | 1.5.17 | Medical Ward - Design Immersive 3d room |  | 3d | 2025-05-08 | 2025-05-12 | 59 | 7d | 0d | Associate full stack software Engineer 1 | 24h | 768 |
| 78 | 1.5.18 | Medical Ward - Design VR Doctor and patient models |  | 3d | 2025-05-08 | 2025-05-12 | 59 | 7d | 0d | Associate full stack software Engineer 2 | 24h | 768 |
| 79 | 1.5.19 | Medical Ward - Design interactive medical tools |  | 3d | 2025-05-08 | 2025-05-12 | 59 | 7d | 0d | Fullstack software engineer Intern 1 | 24h | 600 |
| 80 | 1.5.20 | Medical Ward - Design role-playing mechanics |  | 3d | 2025-05-08 | 2025-05-12 | 59 | 7d | 0d | Fullstack software engineer Intern 2 | 24h | 600 |
| 81 | 1.5.21 | Gather Feedback from lecturer and students |  | 2d | 2025-05-13 | 2025-05-14 | 77, 78, 79, 80 | 7d |  | Senior Product Owner | 16h | 832 |
| 82 | 1.5.22 | Plan performance improvements |  | 3d | 2025-05-08 | 2025-05-12 | 59 | 9d |  | Senior Platforms Engineer; Senior VR Software Engineer 1 | 48h | 2,544 |
| 83 | 1.5.23 | Sprint Review and Retrospective |  | 1d | 2025-05-26 | 2025-05-26 | 61, 62, 63, 64, 65, 66, 67, 68, 69, 70, 71, 72, 73, 74, 75, 76, 77, 78, 79, 80, 81, 82 | 0d |  | Associate full stack software Engineer 2 | 8h | 256 |

| ID | WBS | Task | Type | Duration | Start | Finish | Predecessors | Total slack | Resources | Work | Cost |
| --- | --- | --- | --- | --- | --- | --- | --- | --- | --- | --- | --- |
| 84 | 1.6 | **Sprint 5** |  | 6d | 2025-05-27 | 2025-06-03 |  | 0d |  | 264h | 8,672 |
| 85 | 1.6.1 | Deploy to Test Environment |  | 1d | 2025-05-27 | 2025-05-27 | 83 | 4d | Associate full stack software Engineer 1 | 8h | 256 |
| 86 | 1.6.2 | Develop performance improvements |  | 3d | 2025-05-27 | 2025-05-29 | 82, 83 | 2d | Intermediate Full stack software engineer 1 | 24h | 1,008 |
| 87 | 1.6.3 | Medical Ward - Develop Immersive 3d room |  | 3d | 2025-05-27 | 2025-05-29 | 77, 83 | 0d | Associate full stack software Engineer 2 | 24h | 768 |
| 88 | 1.6.4 | Medical Ward - Develop VR Doctor and patient models |  | 3d | 2025-05-27 | 2025-05-29 | 78, 83 | 0d | Fullstack software engineer Intern 1 | 24h | 600 |
| 89 | 1.6.5 | Medical Ward - Develop interactive medical tools |  | 3d | 2025-05-27 | 2025-05-29 | 79, 83 | 0d | Fullstack software engineer Intern 2 | 24h | 600 |
| 90 | 1.6.6 | Medical Ward - Develop role-playing mechanics |  | 3d | 2025-05-27 | 2025-05-29 | 80, 83 | 0d | Fullstack software engineer Intern 3 | 24h | 600 |
| 91 | 1.6.7 | Testing of Medical Ward |  | 2d | 2025-05-30 | 2025-06-02 | 87, 88, 89, 90 | 0d | Fullstack software engineer Intern 4 | 16h | 400 |
| 92 | 1.6.8 | Completion of Medical Ward | milestone | 0d | 2025-06-02 | 2025-06-02 | 91 | 0d | Senior QA Engineer |  |  |
| 93 | 1.6.9 | Operating Room - Design Immersive 3d room |  | 3d | 2025-05-27 | 2025-05-29 | 83 | 0d | Fullstack software engineer Intern 5 | 24h | 600 |
| 94 | 1.6.10 | Operating Room - Design VR Doctor and patient models |  | 3d | 2025-05-27 | 2025-05-29 | 83 | 0d | Fullstack software engineer Intern 4 | 24h | 600 |
| 95 | 1.6.11 | Operating Room - Design interactive medical tools |  | 3d | 2025-05-27 | 2025-05-29 | 83 | 0d | Intermediate Full stack software engineer 2 | 24h | 1,008 |
| 96 | 1.6.12 | Operating Room - Design role-playing mechanics |  | 3d | 2025-05-27 | 2025-05-29 | 83 | 0d | Senior VR Software Engineer 1 | 24h | 1,200 |
| 97 | 1.6.13 | Gather Feedback from lecturer and students |  | 2d | 2025-05-30 | 2025-06-02 | 93, 94, 95, 96 | 0d | Senior Product Owner | 16h | 832 |
| 98 | 1.6.14 | Sprint Review and Retrospective |  | 1d | 2025-06-03 | 2025-06-03 | 85, 86, 87, 88, 89, 90, 91, 92, 93, 94, 95, 96, 97 | 0d | Fullstack software engineer Intern 1 | 8h | 200 |
| 99 | 1.7 | **Sprint 6** |  | 6d | 2025-06-04 | 2025-06-11 |  | 0d |  | 240h | 8,728 |
| 100 | 1.7.1 | Deploy to Test Environment |  | 1d | 2025-06-04 | 2025-06-04 | 98 | 4d | Fullstack software engineer Intern 2 | 8h | 200 |
| 101 | 1.7.2 | Operating Room - Develop Immersive 3d room |  | 3d | 2025-06-04 | 2025-06-06 | 93, 98 | 0d | Fullstack software engineer Intern 3 | 24h | 600 |
| 102 | 1.7.3 | Operating Room - Develop VR Doctor and patient models |  | 3d | 2025-06-04 | 2025-06-06 | 94, 98 | 0d | Fullstack software engineer Intern 4 | 24h | 600 |
| 103 | 1.7.4 | Operating Room - Develop interactive medical tools |  | 3d | 2025-06-04 | 2025-06-06 | 95, 98 | 0d | Fullstack software engineer Intern 5 | 24h | 600 |
| 104 | 1.7.5 | Operating Room - Develop role-playing mechanics |  | 3d | 2025-06-04 | 2025-06-06 | 96, 98 | 0d | Associate full stack software Engineer 2 | 24h | 768 |
| 105 | 1.7.6 | Testing of Operating Room |  | 2d | 2025-06-09 | 2025-06-10 | 101, 102, 103, 104 | 0d | Associate full stack software Engineer 1 | 16h | 512 |
| 106 | 1.7.7 | Completion of Operating Room | milestone | 0d | 2025-06-10 | 2025-06-10 | 105 | 0d | Senior QA Engineer |  |  |
| 107 | 1.7.8 | Maternity Care - Design Immersive 3d room |  | 3d | 2025-06-04 | 2025-06-06 | 98 | 0d | Intermediate Full stack software engineer 1 | 24h | 1,008 |
| 108 | 1.7.9 | Maternity Care - Design VR Doctor and patient models |  | 3d | 2025-06-04 | 2025-06-06 | 98 | 0d | Intermediate Full stack software engineer 2 | 24h | 1,008 |
| 109 | 1.7.10 | Maternity Care - Design interactive medical tools |  | 3d | 2025-06-04 | 2025-06-06 | 98 | 0d | Senior VR Software Engineer 1 | 24h | 1,200 |
| 110 | 1.7.11 | Maternity Care - Design role-playing mechanics |  | 3d | 2025-06-04 | 2025-06-06 | 98 | 0d | Senior VR Software Engineer 2 | 24h | 1,200 |
| 111 | 1.7.12 | Gather Feedback from lecturer and students |  | 2d | 2025-06-09 | 2025-06-10 | 107, 108, 109, 110 | 0d | Senior Product Owner | 16h | 832 |
| 112 | 1.7.13 | Sprint Review and Retrospective |  | 1d | 2025-06-11 | 2025-06-11 | 100, 101, 102, 103, 104, 105, 106, 107, 108, 109, 110, 111 | 0d | Fullstack software engineer Intern 5 | 8h | 200 |

| ID | WBS | Task | Type | Duration | Start | Finish | Predecessors | Total slack | Free slack | Resources | Work | Cost |
| --- | --- | --- | --- | --- | --- | --- | --- | --- | --- | --- | --- | --- |
| 113 | 1.8 | **Sprint 7** |  | 7d | 2025-06-12 | 2025-06-20 |  | 0d |  |  | 248h | 9,080 |
| 114 | 1.8.1 | Deploy to Test Environment |  | 1d | 2025-06-12 | 2025-06-12 | 112 | 5d |  | Fullstack software engineer Intern 4 | 8h | 200 |
| 115 | 1.8.2 | Maternity Care - Develop Immersive 3d room |  | 3d | 2025-06-12 | 2025-06-16 | 107, 112 | 0d |  | Fullstack software engineer Intern 3 | 24h | 600 |
| 116 | 1.8.3 | Maternity Care - Develop VR Doctor and patient models |  | 3d | 2025-06-12 | 2025-06-16 | 108, 112 | 0d |  | Fullstack software engineer Intern 2 | 24h | 600 |
| 117 | 1.8.4 | Maternity Care - Develop interactive medical tools |  | 3d | 2025-06-12 | 2025-06-16 | 109, 112 | 0d |  | Fullstack software engineer Intern 1 | 24h | 600 |
| 118 | 1.8.5 | Maternity Care - Develop role-playing mechanics |  | 3d | 2025-06-12 | 2025-06-16 | 110, 112 | 0d |  | Associate full stack software Engineer 2 | 24h | 768 |
| 119 | 1.8.6 | Testing of Maternity Care |  | 2d | 2025-06-17 | 2025-06-18 | 115, 116, 117, 118 | 0d |  | Associate full stack software Engineer 1 | 16h | 512 |
| 120 | 1.8.7 | Completion of Maternity Care |  | 1d | 2025-06-19 | 2025-06-19 | 119 | 0d |  | Senior QA Engineer | 8h | 296 |
| 121 | 1.8.8 | Behavioral and Mental Health Room - Design Immersive 3d room |  | 3d | 2025-06-12 | 2025-06-16 | 112 | 1d | 0d | Intermediate Full stack software engineer 2 | 24h | 1,008 |
| 122 | 1.8.9 | Behavioral and Mental Health Room - Design VR Doctor and patient models |  | 3d | 2025-06-12 | 2025-06-16 | 112 | 1d | 0d | Intermediate Full stack software engineer 1 | 24h | 1,008 |
| 123 | 1.8.10 | Behavioral and Mental Health Room - Design interactive medical tools |  | 3d | 2025-06-12 | 2025-06-16 | 112 | 1d | 0d | Senior VR Software Engineer 2 | 24h | 1,200 |
| 124 | 1.8.11 | Behavioral and Mental Health Room - Design role-playing mechanics |  | 3d | 2025-06-12 | 2025-06-16 | 112 | 1d | 0d | Senior VR Software Engineer 1 | 24h | 1,200 |
| 125 | 1.8.12 | Gather Feedback from lecturer and students |  | 2d | 2025-06-17 | 2025-06-18 | 121, 122, 123, 124 | 1d |  | Senior Product Owner | 16h | 832 |
| 126 | 1.8.13 | Sprint Review and Retrospective |  | 1d | 2025-06-20 | 2025-06-20 | 114, 115, 116, 117, 118, 119, 120, 121, 122, 123, 124, 125 | 0d |  | Associate full stack software Engineer 1 | 8h | 256 |
| 127 | 1.9 | **Sprint 8** |  | 6d | 2025-06-23 | 2025-06-30 |  | 0d |  |  | 240h | 8,480 |
| 128 | 1.9.1 | Deploy to Higher Environment |  | 1d | 2025-06-23 | 2025-06-23 | 126 | 4d |  | Intermediate Full stack software engineer 1 | 8h | 336 |
| 129 | 1.9.2 | Behavioral and Mental Health Room - Develop Immersive 3d room |  | 3d | 2025-06-23 | 2025-06-25 | 121, 126 | 0d |  | Senior VR Software Engineer 2 | 24h | 1,200 |
| 130 | 1.9.3 | Behavioral and Mental Health Room - Develop VR Doctor and patient models |  | 3d | 2025-06-23 | 2025-06-25 | 122, 126 | 0d |  | Associate full stack software Engineer 2 | 24h | 768 |
| 131 | 1.9.4 | Behavioral and Mental Health Room - Develop interactive medical tools |  | 3d | 2025-06-23 | 2025-06-25 | 123, 126 | 0d |  | Intermediate Full stack software engineer 2 | 24h | 1,008 |
| 132 | 1.9.5 | Behavioral and Mental Health Room - Develop role-playing mechanics |  | 3d | 2025-06-23 | 2025-06-25 | 124, 126 | 0d |  | Fullstack software engineer Intern 1 | 24h | 600 |
| 133 | 1.9.6 | Testing of Behavioral and Mental Health Room |  | 2d | 2025-06-26 | 2025-06-27 | 129, 130, 131, 132 | 0d |  | Fullstack software engineer Intern 2 | 16h | 400 |
| 134 | 1.9.7 | Completion of Behavioral and Mental Health Room | milestone | 0d | 2025-06-27 | 2025-06-27 | 133 | 0d |  | Senior QA Engineer |  |  |
| 135 | 1.9.8 | Family Room - Design Immersive 3d room |  | 3d | 2025-06-23 | 2025-06-25 | 126 | 0d |  | Fullstack software engineer Intern 3 | 24h | 600 |
| 136 | 1.9.9 | Family Room - Design VR Doctor and patient models |  | 3d | 2025-06-23 | 2025-06-25 | 126 | 0d |  | Fullstack software engineer Intern 4 | 24h | 600 |
| 137 | 1.9.10 | Family Room - Design interactive medical tools |  | 3d | 2025-06-23 | 2025-06-25 | 126 | 0d |  | Fullstack software engineer Intern 5 | 24h | 600 |
| 138 | 1.9.11 | Family Room - Design role-playing mechanics |  | 3d | 2025-06-23 | 2025-06-25 | 126 | 0d |  | Senior VR Software Engineer 1 | 24h | 1,200 |
| 139 | 1.9.12 | Gather Feedback from lecturer and students |  | 2d | 2025-06-26 | 2025-06-27 | 135, 136, 137, 138 | 0d |  | Senior Product Owner | 16h | 832 |
| 140 | 1.9.13 | Sprint Review and Retrospective |  | 1d | 2025-06-30 | 2025-06-30 | 128, 129, 130, 131, 132, 133, 134, 135, 136, 137, 138, 139 | 0d |  | Intermediate Full stack software engineer 2 | 8h | 336 |

| ID | WBS | Task | Type | Duration | Start | Finish | Predecessors | Total slack | Free slack | Resources | Work | Cost |
| --- | --- | --- | --- | --- | --- | --- | --- | --- | --- | --- | --- | --- |
| 141 | 1.10 | **Sprint 9** |  | 6d | 2025-07-01 | 2025-07-08 |  | 0d |  |  | 240h | 7,872 |
| 142 | 1.10.1 | Deploy to Higher Environment |  | 1d | 2025-07-01 | 2025-07-01 | 140 | 4d |  | Fullstack software engineer Intern 5 | 8h | 200 |
| 143 | 1.10.2 | Family Room - Develop Immersive 3d room |  | 3d | 2025-07-01 | 2025-07-03 | 135, 140 | 0d |  | Fullstack software engineer Intern 4 | 24h | 600 |
| 144 | 1.10.3 | Family Room - Develop VR Doctor and patient models |  | 3d | 2025-07-01 | 2025-07-03 | 136, 140 | 0d |  | Fullstack software engineer Intern 3 | 24h | 600 |
| 145 | 1.10.4 | Family Room - Develop interactive medical tools |  | 3d | 2025-07-01 | 2025-07-03 | 137, 140 | 0d |  | Fullstack software engineer Intern 2 | 24h | 600 |
| 146 | 1.10.5 | Family Room - Develop role-playing mechanics |  | 3d | 2025-07-01 | 2025-07-03 | 138, 140 | 0d |  | Fullstack software engineer Intern 1 | 24h | 600 |
| 147 | 1.10.6 | Testing of Family Room |  | 2d | 2025-07-04 | 2025-07-07 | 143, 144, 145, 146 | 0d |  | Associate full stack software Engineer 1 | 16h | 512 |
| 148 | 1.10.7 | Completion of Family Room | milestone | 0d | 2025-07-07 | 2025-07-07 | 147 | 0d |  | Senior QA Engineer |  |  |
| 149 | 1.10.8 | Neonatal Intensive Care Unit (NICU) - Design Immersive 3d room |  | 3d | 2025-07-01 | 2025-07-03 | 140 | 0d |  | Associate full stack software Engineer 2 | 24h | 768 |
| 150 | 1.10.9 | Neonatal Intensive Care Unit (NICU) - Design VR Doctor and patient models |  | 3d | 2025-07-01 | 2025-07-03 | 140 | 0d |  | Intermediate Full stack software engineer 1 | 24h | 1,008 |
| 151 | 1.10.10 | Neonatal Intensive Care Unit (NICU) - Design interactive medical tools |  | 3d | 2025-07-01 | 2025-07-03 | 140 | 0d |  | Intermediate Full stack software engineer 2 | 24h | 1,008 |
| 152 | 1.10.11 | Neonatal Intensive Care Unit (NICU) - Design role-playing mechanics |  | 3d | 2025-07-01 | 2025-07-03 | 140 | 0d |  | Senior VR Designer/Content Developer | 24h | 888 |
| 153 | 1.10.12 | Gather Feedback from lecturer and students |  | 2d | 2025-07-04 | 2025-07-07 | 149, 150, 151, 152 | 0d |  | Senior Product Owner | 16h | 832 |
| 154 | 1.10.13 | Sprint Review and Retrospective |  | 1d | 2025-07-08 | 2025-07-08 | 142, 143, 144, 145, 146, 147, 148, 149, 150, 151, 152, 153 | 0d |  | Associate full stack software Engineer 2 | 8h | 256 |
| 155 | 1.11 | **Sprint 10** |  | 12d | 2025-07-09 | 2025-07-24 |  | 0d |  |  | 200h | 6,952 |
| 156 | 1.11.1 | Deploy to Higher Environment |  | 1d | 2025-07-09 | 2025-07-09 | 154 | 10d |  | Intermediate Full stack software engineer 1 | 8h | 336 |
| 157 | 1.11.2 | Neonatal Intensive Care Unit (NICU) - Develop Immersive 3d room |  | 3d | 2025-07-09 | 2025-07-11 | 149, 154 | 0d |  | Fullstack software engineer Intern 5 | 24h | 600 |
| 158 | 1.11.3 | Neonatal Intensive Care Unit (NICU) - Develop VR Doctor and patient models |  | 3d | 2025-07-09 | 2025-07-11 | 150, 154 | 0d |  | Fullstack software engineer Intern 4 | 24h | 600 |
| 159 | 1.11.4 | Neonatal Intensive Care Unit (NICU) - Develop interactive medical tools |  | 3d | 2025-07-09 | 2025-07-11 | 151, 154 | 0d |  | Fullstack software engineer Intern 3 | 24h | 600 |
| 160 | 1.11.5 | Neonatal Intensive Care Unit (NICU) - Develop role-playing mechanics |  | 3d | 2025-07-09 | 2025-07-11 | 152, 154 | 0d |  | Fullstack software engineer Intern 2 | 24h | 600 |
| 161 | 1.11.6 | Testing of Neonatal Intensive Care Unit (NICU) |  | 2d | 2025-07-14 | 2025-07-15 | 157, 158, 159, 160 | 0d |  | Intermediate Full stack software engineer 1 | 16h | 672 |
| 162 | 1.11.7 | Completion of Neonatal Intensive Care Unit (NICU) | milestone | 0d | 2025-07-15 | 2025-07-15 | 161 | 0d |  | Senior QA Engineer |  |  |
| 163 | 1.11.8 | Preparation and Completion of Pre-prod requirements |  | 2d | 2025-07-16 | 2025-07-17 | 154, 162 | 0d |  | Senior Platforms Engineer | 16h | 896 |
| 164 | 1.11.9 | Deploy to staging environment |  | 1d | 2025-07-18 | 2025-07-18 | 163 | 0d |  | Senior Platforms Engineer | 8h | 448 |
| 165 | 1.11.10 | End to End testing of Staging Environment |  | 3d | 2025-07-21 | 2025-07-23 | 164 | 0d |  | Senior QA Engineer | 24h | 888 |
| 166 | 1.11.11 | Update of User Training Manual |  | 2d | 2025-07-16 | 2025-07-17 | 162 | 3d | 0d | Trainer | 16h | 608 |
| 167 | 1.11.12 | User Training for Students and Lecturers |  | 1d | 2025-07-18 | 2025-07-18 | 166 | 3d | 0d | Trainer | 8h | 304 |
| 168 | 1.11.13 | Completion of Manual and User Training to Students and Lecturers | milestone | 0d | 2025-07-18 | 2025-07-18 | 166, 167 | 3d |  | Trainer |  |  |
| 169 | 1.11.14 | Deploy to Production | milestone | 0d | 2025-07-23 | 2025-07-23 | 165 | 0d |  | Senior Platforms Engineer |  |  |
| 170 | 1.11.15 | Sprint Review and Retrospective |  | 1d | 2025-07-24 | 2025-07-24 | 156, 157, 158, 159, 160, 161, 162, 163, 164, 165, 166, 167, 168, 169 | 0d |  | Senior VR Software Engineer 1 | 8h | 400 |
| 171 | 1.11.16 | Project Closure | milestone | 0d | 2025-07-24 | 2025-07-24 | 170 | 0d |  | Engineering Manager |  |  |
